How a schedule from MS Project changed from version to version. A marks actual dates.

## Version 1 (saved 2019-06-19, file 3.1教学辅助系统WBS.mpp)

| ID | WBS | Task | Duration | Start | Finish |
| --- | --- | --- | --- | --- | --- |
| 1 | 1 | **启动** | 1d? | 2009-11-16 | 2009-11-17 |
| 2 |  | 任命项目经理 | 1d? | 2009-11-16 | 2009-11-17 |
| 3 |  | 组建核心团队 | 1d? | 2009-11-16 | 2009-11-17 |
| 4 |  | 关系人分析 | 1d? | 2009-11-16 | 2009-11-17 |
| 5 |  | 制订章程 | 1d? | 2009-11-16 | 2009-11-17 |
| 6 |  | 确定项目发起人 | 1d? | 2009-11-16 | 2009-11-17 |
| 7 |  | 制定里程碑进度计划 | 1d? | 2009-11-16 | 2009-11-17 |
| 8 |  | 项目启动大会 | 1d? | 2009-11-16 | 2009-11-17 |
| 9 | 2 | **规划** | 1d? | 2009-11-16 | 2009-11-17 |
| 10 | 2.1 | **规划范围** | 1d? | 2009-11-16 | 2009-11-17 |
| 11 |  | 制定需求说明书 | 1d? | 2009-11-16 | 2009-11-17 |
| 12 |  | 界面设计 | 1d? | 2009-11-16 | 2009-11-17 |
| 13 |  | 详细设计说明书 | 1d? | 2009-11-16 | 2009-11-17 |
| 14 |  | 范围说明书 | 1d? | 2009-11-16 | 2009-11-17 |
| 15 |  | 创建WBS | 1d? | 2009-11-16 | 2009-11-17 |
| 16 |  | 形成范围基准 | 1d? | 2009-11-16 | 2009-11-17 |
| 17 | 2.2 | **规划时间** | 1d? | 2009-11-16 | 2009-11-17 |
| 18 |  | 排列工作包顺序 | 1d? | 2009-11-16 | 2009-11-17 |
| 19 |  | 估算资源 | 1d? | 2009-11-16 | 2009-11-17 |
| 20 |  | 估算持续时间 | 1d? | 2009-11-16 | 2009-11-17 |
| 21 |  | 制定进度计划 | 1d? | 2009-11-16 | 2009-11-17 |
| 22 | 2.3 | **规划成本** | 1d? | 2009-11-16 | 2009-11-17 |
| 23 |  | 项目成本估算 | 1d? | 2009-11-16 | 2009-11-17 |
| 24 |  | 项目预算 | 1d? | 2009-11-16 | 2009-11-17 |
| 25 | 2.4 | **规划质量** | 1d? | 2009-11-16 | 2009-11-17 |
| 26 |  | 制定测试计划 | 1d? | 2009-11-16 | 2009-11-17 |
| 27 |  | 制定测试用例 | 1d? | 2009-11-16 | 2009-11-17 |
| 28 | 2.5 | **规划人力资源** | 1d? | 2009-11-16 | 2009-11-17 |
| 29 |  | 制定人力资源计划 | 1d? | 2009-11-16 | 2009-11-17 |
| 30 |  | 制定人员配备管理计划 | 1d? | 2009-11-16 | 2009-11-17 |
| 31 | 2.6 | **规划沟通** | 1d? | 2009-11-16 | 2009-11-17 |
| 32 |  | 制定沟通管理计划 | 1d? | 2009-11-16 | 2009-11-17 |
| 33 | 2.7 | **规划风险** | 1d? | 2009-11-16 | 2009-11-17 |
| 34 |  | 识别风险 | 1d? | 2009-11-16 | 2009-11-17 |
| 35 |  | 风险分析 | 1d? | 2009-11-16 | 2009-11-17 |
| 36 |  | 制定风险登记册 | 1d? | 2009-11-16 | 2009-11-17 |
| 37 |  | 规划整合 | 1d? | 2009-11-16 | 2009-11-17 |
| 38 | 3 | **执行与监控** | 1d? | 2009-11-16 | 2009-11-17 |
| 39 |  | 组建项目团队 | 1d? | 2009-11-16 | 2009-11-17 |
| 40 | 4 | **项目执行** | 1d? | 2009-11-16 | 2009-11-17 |
| 41 | 4.1 | **学生CS模块** | 1d? | 2009-11-16 | 2009-11-17 |
| 42 |  | 登录修改密码 | 1d? | 2009-11-16 | 2009-11-17 |
| 43 |  | 资源共享 | 1d? | 2009-11-16 | 2009-11-17 |
| 44 |  | 签到 | 1d? | 2009-11-16 | 2009-11-17 |
| 45 |  | 录屏 | 1d? | 2009-11-16 | 2009-11-17 |
| 46 |  | 签到排名 | 1d? | 2009-11-16 | 2009-11-17 |
| 47 |  | 课堂小测 | 1d? | 2009-11-16 | 2009-11-17 |
| 48 |  | 成绩分析和预测 | 1d? | 2009-11-16 | 2009-11-17 |
| 49 |  | 共享屏幕 | 1d? | 2009-11-16 | 2009-11-17 |
| 50 | 4.2 | **老师CS模块** | 1d? | 2009-11-16 | 2009-11-17 |
| 51 |  | 登录修改密码 | 1d? | 2009-11-16 | 2009-11-17 |
| 52 |  | 资源共享 | 1d? | 2009-11-16 | 2009-11-17 |
| 53 |  | 查看签到记录 | 1d? | 2009-11-16 | 2009-11-17 |
| 54 |  | 共享屏幕 | 1d? | 2009-11-16 | 2009-11-17 |
| 55 |  | 随机点名 | 1d? | 2009-11-16 | 2009-11-17 |
| 56 |  | 学生演示 | 1d? | 2009-11-16 | 2009-11-17 |
| 57 |  | 查看小测 | 1d? | 2009-11-16 | 2009-11-17 |
| 58 |  | 课堂反馈 | 1d? | 2009-11-16 | 2009-11-17 |
| 59 |  | 上传小测 | 1d? | 2009-11-16 | 2009-11-17 |
| 60 | 4.3 | **学生BS模块** | 1d? | 2009-11-16 | 2009-11-17 |
| 61 |  | 登录修改密码 | 1d? | 2009-11-16 | 2009-11-17 |
| 62 |  | 上传请假条 | 1d? | 2009-11-16 | 2009-11-17 |
| 63 |  | 查看请假记录 | 1d? | 2009-11-16 | 2009-11-17 |
| 64 | 4.4 | **老师BS模块** | 1d? | 2009-11-16 | 2009-11-17 |
| 65 |  | 登录修改密码 | 1d? | 2009-11-16 | 2009-11-17 |
| 66 |  | 审核请假条 | 1d? | 2009-11-16 | 2009-11-17 |
| 67 |  | 请假记录查看 | 1d? | 2009-11-16 | 2009-11-17 |
| 68 |  | 创建班级 | 1d? | 2009-11-16 | 2009-11-17 |
| 69 | 5 | **项目监控** | 1d? | 2009-11-16 | 2009-11-17 |
| 70 |  | 各项指标监控 | 1d? | 2009-11-16 | 2009-11-17 |

| ID | WBS | Task | Duration | Start | Finish |
| --- | --- | --- | --- | --- | --- |
| 71 |  | 监控评审 | 1d? | 2009-11-16 | 2009-11-17 |
| 72 |  | 变更评审 | 1d? | 2009-11-16 | 2009-11-17 |
| 73 |  | 例会 | 1d? | 2009-11-16 | 2009-11-17 |
| 74 | 6 | **管理关系人** | 1d? | 2009-11-16 | 2009-11-17 |
| 75 |  | 发布项目信息 | 1d? | 2009-11-16 | 2009-11-17 |
| 76 |  | 报告监控指标 | 1d? | 2009-11-16 | 2009-11-17 |
| 77 |  | 关系人沟通 | 1d? | 2009-11-16 | 2009-11-17 |
| 78 | 7 | **团队建设** | 1d? | 2009-11-16 | 2009-11-17 |
| 79 |  | 娱乐活动 | 1d? | 2009-11-16 | 2009-11-17 |
| 80 |  | 沟通 | 1d? | 2009-11-16 | 2009-11-17 |
| 81 | 8 | **收尾** | 1d? | 2009-11-16 | 2009-11-17 |
| 82 |  | 项目内部收尾 | 1d? | 2009-11-16 | 2009-11-17 |
| 83 |  | 项目展示 | 1d? | 2009-11-16 | 2009-11-17 |

## Version 2 (saved 2019-06-19, file 3.3教育辅助系统估算资源.mpp)

Last finish 2009-11-17 → 2019-06-25 (+3507d).

Changed:

| ID | Task | Start | Finish | Duration | Complete | Total float | Predecessors | Other |
| --- | --- | --- | --- | --- | --- | --- | --- | --- |
| 1 | **启动** | 2009-11-16 → 2019-03-18 A (+3409d) | 2009-11-17 → 2019-04-02 (+3423d) | 1d? → 12d? | 0% → 4% | none → -8d |  |  |
| 2 | 任命项目经理 | 2009-11-16 → 2019-03-18 (+3409d) | 2009-11-17 → 2019-03-18 (+3408d) | 1d? → 1d |  |  |  | resources none → 项目发起人 |
| 3 | 组建核心团队 | 2009-11-16 → 2019-03-19 A (+3410d) | 2009-11-17 → 2019-03-19 (+3409d) | 1d? → 1d | 0% → 50% |  | none → 2 | resources none → 项目经理; UI设计师 |
| 4 | 关系人分析 | 2009-11-16 → 2019-03-20 (+3411d) | 2009-11-17 → 2019-03-21 (+3411d) | 1d? → 2d |  |  | none → 3 | resources none → 项目经理 |
| 5 | 制订章程 | 2009-11-16 → 2019-03-22 (+3413d) | 2009-11-17 → 2019-03-28 (+3418d) | 1d? → 5d |  | none → -61d | none → 4, 6 | resources none → 项目经理 |
| 6 | 确定项目发起人 | 2009-11-16 → 2019-03-18 (+3409d) | 2009-11-17 → 2019-03-18 (+3408d) |  |  |  |  |  |
| 7 | 制定里程碑进度计划 | 2009-11-16 → 2019-03-29 (+3420d) | 2009-11-17 → 2019-04-01 (+3422d) | 1d? → 2d |  | none → -61d | none → 5 | resources none → 项目经理 |
| 8 | 项目启动大会 | 2009-11-16 → 2019-04-02 (+3424d) | 2009-11-17 → 2019-04-02 (+3423d) | 1d? → 1d |  | none → -61d | none → 7 | resources none → UI设计师; 产品经理; 软件架构师; 项目发起人; 项目经理 |
| 9 | **规划** | 2009-11-16 → 2019-03-18 (+3409d) | 2009-11-17 → 2019-05-02 (+3453d) | 1d? → 33d? |  | none → -49d |  |  |
| 10 | **规划范围** | 2009-11-16 → 2019-04-03 (+3425d) | 2009-11-17 → 2019-04-16 (+3437d) | 1d? → 10d? |  | none → -61d |  |  |
| 11 | 制定需求说明书 | 2009-11-16 → 2019-04-04 (+3426d) | 2009-11-17 → 2019-04-05 (+3426d) | 1d? → 2d |  | none → -61d | none → 14 | resources none → 产品经理; 项目经理 |
| 12 | 界面设计 | 2009-11-16 → 2019-04-08 (+3430d) | 2009-11-17 → 2019-04-09 (+3430d) | 1d? → 2d |  | none → -61d | none → 11 | resources none → UI设计师; 项目经理 |
| 13 | 详细设计说明书 | 2009-11-16 → 2019-04-10 (+3432d) | 2009-11-17 → 2019-04-12 (+3433d) | 1d? → 3d |  | none → -61d | none → 12 | resources none → UI设计师; 产品经理; 软件架构师; 项目经理 |
| 14 | 范围说明书 | 2009-11-16 → 2019-04-03 (+3425d) | 2009-11-17 → 2019-04-03 (+3424d) | 1d? → 1d |  | none → -61d | none → 8 | resources none → 项目发起人; 项目经理 |
| 15 | 创建WBS | 2009-11-16 → 2019-04-15 (+3437d) | 2009-11-17 → 2019-04-15 (+3436d) |  |  | none → -61d | none → 13 |  |
| 16 | 形成范围基准 | 2009-11-16 → 2019-04-16 (+3438d) | 2009-11-17 → 2019-04-16 (+3437d) | 1d? → 1d |  | none → -61d | none → 15 | resources none → 项目发起人; 项目经理 |
| 17 | **规划时间** | 2009-11-16 → 2019-04-17 (+3439d) | 2009-11-17 → 2019-04-22 (+3443d) | 1d? → 4d |  | none → -61d |  |  |
| 18 | 排列工作包顺序 | 2009-11-16 → 2019-04-17 (+3439d) | 2009-11-17 → 2019-04-18 (+3439d) | 1d? → 2d |  | none → -61d | none → 16 | resources none → 软件架构师; 项目经理 |
| 19 | 估算资源 | 2009-11-16 → 2019-04-19 (+3441d) | 2009-11-17 → 2019-04-19 (+3440d) | 1d? → 1d |  | none → -61d | none → 18 | resources none → 产品经理; 软件架构师; 项目经理 |
| 20 | 估算持续时间 | 2009-11-16 → 2019-04-19 (+3441d) | 2009-11-17 → 2019-04-19 (+3440d) | 1d? → 1d |  | none → -61d | none → 18 | resources none → 产品经理; 软件架构师; 项目经理 |
| 21 | 制定进度计划 | 2009-11-16 → 2019-04-22 (+3444d) | 2009-11-17 → 2019-04-22 (+3443d) | 1d? → 1d |  | none → -61d | none → 19, 20 | resources none → 项目经理 |
| 22 | **规划成本** | 2009-11-16 → 2019-04-23 (+3445d) | 2009-11-17 → 2019-04-24 (+3445d) | 1d? → 2d |  | none → -61d |  |  |
| 23 | 项目成本估算 | 2009-11-16 → 2019-04-23 (+3445d) | 2009-11-17 → 2019-04-23 (+3444d) | 1d? → 1d |  | none → -61d | none → 21 | resources none → 项目发起人; 项目经理 |
| 24 | 项目预算 | 2009-11-16 → 2019-04-24 (+3446d) | 2009-11-17 → 2019-04-24 (+3445d) | 1d? → 1d |  | none → -60d | none → 23 | resources none → 项目发起人; 项目经理 |
| 25 | **规划质量** | 2009-11-16 → 2019-04-24 (+3446d) | 2009-11-17 → 2019-04-25 (+3446d) | 1d? → 2d |  | none → -61d |  |  |
| 26 | 制定测试计划 | 2009-11-16 → 2019-04-24 (+3446d) | 2009-11-17 → 2019-04-24 (+3445d) | 1d? → 1d |  | none → -61d | none → 23 | resources none → 软件架构师; 项目经理 |
| 27 | 制定测试用例 | 2009-11-16 → 2019-04-25 (+3447d) | 2009-11-17 → 2019-04-25 (+3446d) | 1d? → 1d |  | none → -61d | none → 26 | resources none → 测试团队 |
| 28 | **规划人力资源** | 2009-11-16 → 2019-04-17 (+3439d) | 2009-11-17 → 2019-04-18 (+3439d) | 1d? → 2d |  | none → -56d |  |  |
| 29 | 制定人力资源计划 | 2009-11-16 → 2019-04-17 (+3439d) | 2009-11-17 → 2019-04-17 (+3438d) | 1d? → 1d |  | none → -56d | none → 16 | resources none → 项目经理 |
| 30 | 制定人员配备管理计划 | 2009-11-16 → 2019-04-18 (+3440d) | 2009-11-17 → 2019-04-18 (+3439d) | 1d? → 1d |  | none → -56d | none → 29 | resources none → 开发团队; 软件架构师; 项目经理 |
| 31 | **规划沟通** | 2009-11-16 → 2019-04-17 (+3439d) | 2009-11-17 → 2019-04-17 (+3438d) | 1d? → 1d |  | none → -55d |  |  |
| 32 | 制定沟通管理计划 | 2009-11-16 → 2019-04-17 (+3439d) | 2009-11-17 → 2019-04-17 (+3438d) | 1d? → 1d |  | none → -55d | none → 16 | resources none → 项目经理; 开发团队; 软件架构师 |
| 33 | **规划风险** | 2009-11-16 → 2019-03-18 (+3409d) | 2009-11-17 → 2019-04-18 (+3439d) | 1d? → 24d |  | none → -34d |  |  |
| 34 | 识别风险 | 2009-11-16 → 2019-03-18 (+3409d) | 2009-11-17 → 2019-03-18 (+3408d) | 1d? → 1d |  |  |  | resources none → 项目发起人; 项目经理 |
| 35 | 风险分析 | 2009-11-16 → 2019-03-19 (+3410d) | 2009-11-17 → 2019-03-19 (+3409d) | 1d? → 1d |  |  | none → 34 | resources none → 项目经理 |
| 36 | 制定风险登记册 | 2009-11-16 → 2019-04-17 (+3439d) | 2009-11-17 → 2019-04-18 (+3439d) | 1d? → 2d |  | none → -56d | none → 16, 35 | resources none → 项目经理 |
| 37 | 规划整合 | 2009-11-16 → 2019-04-26 (+3448d) | 2009-11-17 → 2019-05-02 (+3453d) | 1d? → 4d |  | none → -61d | none → 32, 36, 21, 24, 27, 30 | resources none → 项目经理 |
| 38 | **执行与监控** | 2009-11-16 → 2019-05-03 (+3455d) | 2009-11-17 → 2019-05-03 (+3454d) | 1d? → 1d |  | none → -61d | none → 37 | resources none → 项目经理 |
| 39 | 组建项目团队 | 2009-11-16 → 2019-05-03 (+3455d) | 2009-11-17 → 2019-05-03 (+3454d) | 1d? → 1d |  | none → -61d | none → 37 | resources none → 软件架构师; 项目经理 |
| 40 | **项目执行** | 2009-11-16 → 2019-04-17 (+3439d) | 2009-11-17 → 2019-04-20 (+3441d) | 1d? → 4d |  |  | none → 39 | resources none → UI设计师; 产品经理; 开发团队; 软件架构师; 项目发起人; 项目经理 |
| 41 | **学生CS模块** | 2009-11-16 → 2019-02-07 (+3370d) | 2009-11-17 → 2019-03-27 (+3417d) | 1d? → 35d |  | none → 0d |  |  |
| 42 | 登录修改密码 | 2009-11-16 → 2019-03-18 (+3409d) | 2009-11-17 → 2019-03-18 (+3408d) | 1d? → 1d |  |  |  | resources none → 程序员1 |
| 43 | 资源共享 | 2009-11-16 → 2019-03-20 (+3411d) | 2009-11-17 → 2019-03-21 (+3411d) | 1d? → 2d |  |  |  | resources none → 程序员1 |
| 44 | 签到 | 2009-11-16 → 2019-03-18 (+3409d) | 2009-11-17 → 2019-03-26 (+3416d) | 1d? → 7d |  |  |  | resources none → 程序员3; 程序员7 |
| 45 | 录屏 | 2009-11-16 → 2019-02-16 (+3379d) | 2009-11-17 → 2019-03-06 (+3396d) | 1d? → 14d |  |  |  | resources none → 程序员4; 程序员2 |
| 46 | 签到排名 | 2009-11-16 → 2019-03-27 (+3418d) | 2009-11-17 → 2019-03-27 (+3417d) | 1d? → 1d |  |  | none → 44 | resources none → 程序员1 |
| 47 | 课堂小测 | 2009-11-16 → 2019-02-28 (+3391d) | 2009-11-17 → 2019-03-04 (+3394d) | 1d? → 3d |  |  |  | resources none → 程序员1; 程序员5; 程序员6 |
| 48 | 成绩分析和预测 | 2009-11-16 → 2019-03-05 (+3396d) | 2009-11-17 → 2019-03-08 (+3398d) | 1d? → 4d |  |  | none → 47 | resources none → 程序员1 |
| 49 | 共享屏幕 | 2009-11-16 → 2019-02-07 (+3370d) | 2009-11-17 → 2019-03-04 (+3394d) | 1d? → 18d |  |  |  | resources none → 程序员2; 程序员8 |
| 50 | **老师CS模块** | 2009-11-16 → 2019-02-07 (+3370d) | 2009-11-17 → 2019-03-28 (+3418d) | 1d? → 36d |  | none → 0d |  |  |
| 51 | 登录修改密码 | 2009-11-16 → 2019-03-18 (+3409d) | 2009-11-17 → 2019-03-18 (+3408d) | 1d? → 1d |  |  |  | resources none → 程序员1 |
| 52 | 资源共享 | 2009-11-16 → 2019-03-20 (+3411d) | 2009-11-17 → 2019-03-21 (+3411d) | 1d? → 2d |  |  |  | resources none → 程序员1 |
| 53 | 查看签到记录 | 2009-11-16 → 2019-03-27 (+3418d) | 2009-11-17 → 2019-03-28 (+3418d) | 1d? → 2d |  |  | none → 44 | resources none → 程序员2; 程序员8 |
| 54 | 共享屏幕 | 2009-11-16 → 2019-02-07 (+3370d) | 2009-11-17 → 2019-03-06 (+3396d) | 1d? → 20d |  |  |  | resources none → 程序员2; 程序员8 |
| 55 | 随机点名 | 2009-11-16 → 2019-03-07 (+3398d) | 2009-11-17 → 2019-03-07 (+3397d) | 1d? → 1d |  |  |  | resources none → 程序员7; 程序员3 |
| 56 | 学生演示 | 2009-11-16 → 2019-02-07 (+3370d) | 2009-11-17 → 2019-02-14 (+3376d) | 1d? → 6d |  |  |  | resources none → 程序员2; 程序员7 |
| 57 | 查看小测 | 2009-11-16 → 2019-03-20 (+3411d) | 2009-11-17 → 2019-03-22 (+3412d) | 1d? → 3d |  |  | none → 59 | resources none → 程序员1 |
| 58 | 课堂反馈 | 2009-11-16 → 2019-03-22 (+3413d) | 2009-11-17 → 2019-03-25 (+3415d) | 1d? → 2d |  |  |  | resources none → 程序员3; 程序员7 |
| 59 | 上传小测 | 2009-11-16 → 2019-03-16 (+3407d) | 2009-11-17 → 2019-03-19 (+3409d) | 1d? → 3d |  |  |  | resources none → 程序员1 |
| 60 | **学生BS模块** | 2009-11-16 → 2019-04-04 (+3426d) | 2009-11-17 → 2019-04-18 (+3439d) | 1d? → 11d |  | none → 0d |  |  |
| 61 | 登录修改密码 | 2009-11-16 → 2019-04-04 (+3426d) | 2009-11-17 → 2019-04-04 (+3425d) | 1d? → 1d |  |  |  | resources none → 程序员2 |
| 62 | 上传请假条 | 2009-11-16 → 2019-04-15 (+3437d) | 2009-11-17 → 2019-04-17 (+3438d) | 1d? → 2d |  |  |  | resources none → 程序员2 |
| 63 | 查看请假记录 | 2009-11-16 → 2019-04-18 (+3440d) | 2009-11-17 → 2019-04-18 (+3439d) | 1d? → 1d |  |  | none → 62 | resources none → 程序员2 |
| 64 | **老师BS模块** | 2009-11-16 → 2019-04-04 (+3426d) | 2009-11-17 → 2019-04-18 (+3439d) | 1d? → 11d |  | none → 0d |  |  |
| 65 | 登录修改密码 | 2009-11-16 → 2019-04-04 (+3426d) | 2009-11-17 → 2019-04-04 (+3425d) | 1d? → 1d |  |  |  | resources none → 程序员7 |
| 66 | 审核请假条 | 2009-11-16 → 2019-04-18 (+3440d) | 2009-11-17 → 2019-04-18 (+3439d) | 1d? → 1d |  |  | none → 62 | resources none → 程序员7 |
| 67 | 请假记录查看 | 2009-11-16 → 2019-04-18 (+3440d) | 2009-11-17 → 2019-04-18 (+3439d) | 1d? → 1d |  |  | none → 62 | resources none → 程序员7 |
| 68 | 创建班级 | 2009-11-16 → 2019-04-11 (+3433d) | 2009-11-17 → 2019-04-12 (+3433d) | 1d? → 2d |  |  |  | resources none → 程序员7 |
| 69 | **项目监控** | 2009-11-16 → 2019-03-18 (+3409d) | 2009-11-17 → 2019-06-14 (+3496d) | 1d? → 64d |  |  | none → 38 | resources none → 项目经理 |
| 70 | 各项指标监控 | 2009-11-16 → 2019-05-03 (+3455d) | 2009-11-17 → 2019-05-03 (+3454d) | 1d? → 1d |  |  |  | resources none → UI设计师; 测试团队; 产品经理; 开发团队; 软件架构师; 项目经理; 需求专家 |

| ID | Task | Start | Finish | Duration | Total float | Predecessors | Other |
| --- | --- | --- | --- | --- | --- | --- | --- |
| 71 | 监控评审 | 2009-11-16 → 2019-05-03 (+3455d) | 2009-11-17 → 2019-05-03 (+3454d) | 1d? → 1d |  |  | resources none → 项目发起人; 项目经理 |
| 72 | 变更评审 | 2009-11-16 → 2019-03-18 (+3409d) | 2009-11-17 → 2019-03-18 (+3408d) | 1d? → 1d |  |  | resources none → 软件架构师; 项目经理; 需求专家 |
| 73 | 例会 | 2009-11-16 → 2019-03-18 (+3409d) | 2009-11-17 → 2019-03-21 (+3411d) | 1d? → 4d |  |  | resources none → UI设计师; 测试团队; 开发团队; 软件架构师 |
| 74 | **管理关系人** | 2009-11-16 → 2019-05-03 (+3455d) | 2009-11-17 → 2019-05-07 (+3458d) | 1d? → 2d | none → 0d | none → 38 |  |
| 75 | 发布项目信息 | 2009-11-16 → 2019-05-03 (+3455d) | 2009-11-17 → 2019-05-07 (+3458d) | 1d? → 2d |  |  | resources none → 项目经理 |
| 76 | 报告监控指标 | 2009-11-16 → 2019-05-03 (+3455d) | 2009-11-17 → 2019-05-07 (+3458d) | 1d? → 2d |  |  | resources none → UI设计师; 产品经理; 软件架构师; 需求专家 |
| 77 | 关系人沟通 | 2009-11-16 → 2019-05-03 (+3455d) | 2009-11-17 → 2019-05-07 (+3458d) | 1d? → 2d |  |  | resources none → 项目发起人; 项目经理 |
| 78 | **团队建设** | 2009-11-16 → 2019-03-18 (+3409d) | 2009-11-17 → 2019-03-19 (+3409d) | 1d? → 2d | none → 0d |  |  |
| 79 | 娱乐活动 | 2009-11-16 → 2019-03-18 (+3409d) | 2009-11-17 → 2019-03-19 (+3409d) | 1d? → 2d |  |  | resources none → UI设计师; 测试团队; 开发团队; 软件架构师 |
| 80 | 沟通 | 2009-11-16 → 2019-03-18 (+3409d) | 2009-11-17 → 2019-03-19 (+3409d) | 1d? → 2d |  |  | resources none → UI设计师; 产品经理; 软件架构师; 项目经理; 需求专家 |
| 81 | **收尾** | 2009-11-16 → 2019-06-17 (+3500d) | 2009-11-17 → 2019-06-25 (+3507d) | 1d? → 7d |  |  |  |
| 82 | 项目内部收尾 | 2009-11-16 → 2019-06-17 (+3500d) | 2009-11-17 → 2019-06-25 (+3507d) | 1d? → 7d | none → 0d | none → 69 | resources none → UI设计师; 测试团队; 开发团队; 软件架构师 |
| 83 | 项目展示 | 2009-11-16 → 2019-06-18 (+3501d) | 2009-11-17 → 2019-06-18 (+3500d) | 1d? → 1d |  |  |  |

## Version 3 (saved 2019-06-19, file 3.2教学辅助系统排列工作包顺序.mpp)

Last finish 2019-06-25 → 2019-06-26 (+1d).

Changed:

| ID | Task | Start | Finish | Complete | Total float |
| --- | --- | --- | --- | --- | --- |
| 1 | **启动** | 2019-03-18 A → 2019-03-18 | 2019-04-02 → 2019-04-03 (+1d) | 4% → 0% | -8d → none |
| 2 | 任命项目经理 |  | 2019-03-18 → 2019-03-19 (+1d) |  |  |
| 3 | 组建核心团队 | 2019-03-19 A → 2019-03-19 | 2019-03-19 → 2019-03-20 (+1d) | 50% → 0% |  |
| 4 | 关系人分析 |  | 2019-03-21 → 2019-03-22 (+1d) |  |  |
| 5 | 制订章程 |  | 2019-03-28 → 2019-03-29 (+1d) |  | -61d → none |
| 6 | 确定项目发起人 |  | 2019-03-18 → 2019-03-19 (+1d) |  |  |
| 7 | 制定里程碑进度计划 |  | 2019-04-01 → 2019-04-02 (+1d) |  | -61d → none |
| 8 | 项目启动大会 |  | 2019-04-02 → 2019-04-03 (+1d) |  | -61d → none |
| 10 | **规划范围** |  | 2019-04-16 → 2019-04-17 (+1d) |  | -61d → none |
| 11 | 制定需求说明书 |  | 2019-04-05 → 2019-04-08 (+3d) |  | -61d → none |
| 12 | 界面设计 |  | 2019-04-09 → 2019-04-10 (+1d) |  | -61d → none |
| 13 | 详细设计说明书 |  | 2019-04-12 → 2019-04-15 (+3d) |  | -61d → none |
| 14 | 范围说明书 |  | 2019-04-03 → 2019-04-04 (+1d) |  | -61d → none |
| 15 | 创建WBS |  | 2019-04-15 → 2019-04-16 (+1d) |  | -61d → none |
| 16 | 形成范围基准 |  | 2019-04-16 → 2019-04-17 (+1d) |  | -61d → none |
| 17 | **规划时间** |  | 2019-04-22 → 2019-04-23 (+1d) |  | -61d → none |
| 18 | 排列工作包顺序 |  | 2019-04-18 → 2019-04-19 (+1d) |  | -61d → none |
| 19 | 估算资源 |  | 2019-04-19 → 2019-04-22 (+3d) |  | -61d → none |
| 20 | 估算持续时间 |  | 2019-04-19 → 2019-04-22 (+3d) |  | -61d → none |
| 21 | 制定进度计划 |  | 2019-04-22 → 2019-04-23 (+1d) |  | -61d → none |
| 22 | **规划成本** |  | 2019-04-24 → 2019-04-25 (+1d) |  | -61d → none |
| 23 | 项目成本估算 |  | 2019-04-23 → 2019-04-24 (+1d) |  | -61d → none |
| 24 | 项目预算 |  | 2019-04-24 → 2019-04-25 (+1d) |  | -60d → none |
| 25 | **规划质量** |  | 2019-04-25 → 2019-04-26 (+1d) |  | -61d → none |
| 26 | 制定测试计划 |  | 2019-04-24 → 2019-04-25 (+1d) |  | -61d → none |
| 27 | 制定测试用例 |  | 2019-04-25 → 2019-04-26 (+1d) |  | -61d → none |
| 28 | **规划人力资源** |  | 2019-04-18 → 2019-04-19 (+1d) |  | -56d → none |
| 29 | 制定人力资源计划 |  | 2019-04-17 → 2019-04-18 (+1d) |  | -56d → none |
| 30 | 制定人员配备管理计划 |  | 2019-04-18 → 2019-04-19 (+1d) |  | -56d → none |
| 31 | **规划沟通** |  | 2019-04-17 → 2019-04-18 (+1d) |  | -55d → none |
| 32 | 制定沟通管理计划 |  | 2019-04-17 → 2019-04-18 (+1d) |  | -55d → none |
| 33 | **规划风险** |  | 2019-04-18 → 2019-04-19 (+1d) |  | -34d → none |
| 34 | 识别风险 |  | 2019-03-18 → 2019-03-19 (+1d) |  |  |
| 35 | 风险分析 |  | 2019-03-19 → 2019-03-20 (+1d) |  |  |
| 36 | 制定风险登记册 |  | 2019-04-18 → 2019-04-19 (+1d) |  | -56d → none |
| 38 | **执行与监控** |  | 2019-05-03 → 2019-05-06 (+3d) |  | -61d → none |
| 39 | 组建项目团队 |  | 2019-05-03 → 2019-05-06 (+3d) |  | -61d → none |
| 40 | **项目执行** |  | 2019-04-20 → 2019-04-23 (+3d) |  |  |
| 41 | **学生CS模块** |  | 2019-03-27 → 2019-03-28 (+1d) |  | 0d → none |
| 42 | 登录修改密码 |  | 2019-03-18 → 2019-03-19 (+1d) |  |  |
| 43 | 资源共享 |  | 2019-03-21 → 2019-03-22 (+1d) |  |  |
| 44 | 签到 |  | 2019-03-26 → 2019-03-27 (+1d) |  |  |
| 45 | 录屏 |  | 2019-03-06 → 2019-03-07 (+1d) |  |  |
| 46 | 签到排名 |  | 2019-03-27 → 2019-03-28 (+1d) |  |  |
| 47 | 课堂小测 |  | 2019-03-04 → 2019-03-05 (+1d) |  |  |
| 48 | 成绩分析和预测 |  | 2019-03-08 → 2019-03-11 (+3d) |  |  |
| 49 | 共享屏幕 |  | 2019-03-04 → 2019-03-05 (+1d) |  |  |
| 50 | **老师CS模块** |  | 2019-03-28 → 2019-03-29 (+1d) |  | 0d → none |
| 51 | 登录修改密码 |  | 2019-03-18 → 2019-03-19 (+1d) |  |  |
| 52 | 资源共享 |  | 2019-03-21 → 2019-03-22 (+1d) |  |  |
| 53 | 查看签到记录 |  | 2019-03-28 → 2019-03-29 (+1d) |  |  |
| 54 | 共享屏幕 |  | 2019-03-06 → 2019-03-07 (+1d) |  |  |
| 55 | 随机点名 |  | 2019-03-07 → 2019-03-08 (+1d) |  |  |
| 56 | 学生演示 |  | 2019-02-14 → 2019-02-15 (+1d) |  |  |
| 57 | 查看小测 |  | 2019-03-22 → 2019-03-25 (+3d) |  |  |
| 58 | 课堂反馈 |  | 2019-03-25 → 2019-03-26 (+1d) |  |  |
| 59 | 上传小测 |  | 2019-03-19 → 2019-03-20 (+1d) |  |  |
| 60 | **学生BS模块** |  | 2019-04-18 → 2019-04-19 (+1d) |  | 0d → none |
| 61 | 登录修改密码 |  | 2019-04-04 → 2019-04-05 (+1d) |  |  |
| 63 | 查看请假记录 |  | 2019-04-18 → 2019-04-19 (+1d) |  |  |
| 64 | **老师BS模块** |  | 2019-04-18 → 2019-04-19 (+1d) |  | 0d → none |
| 65 | 登录修改密码 |  | 2019-04-04 → 2019-04-05 (+1d) |  |  |
| 66 | 审核请假条 |  | 2019-04-18 → 2019-04-19 (+1d) |  |  |
| 67 | 请假记录查看 |  | 2019-04-18 → 2019-04-19 (+1d) |  |  |
| 68 | 创建班级 |  | 2019-04-12 → 2019-04-15 (+3d) |  |  |
| 70 | 各项指标监控 |  | 2019-05-03 → 2019-05-06 (+3d) |  |  |
| 71 | 监控评审 |  | 2019-05-03 → 2019-05-06 (+3d) |  |  |
| 72 | 变更评审 |  | 2019-03-18 → 2019-03-19 (+1d) |  |  |
| 73 | 例会 |  | 2019-03-21 → 2019-03-22 (+1d) |  |  |
| 78 | **团队建设** |  | 2019-03-19 → 2019-03-20 (+1d) |  | 0d → none |

| ID | Task | Finish | Total float |
| --- | --- | --- | --- |
| 79 | 娱乐活动 | 2019-03-19 → 2019-03-20 (+1d) |  |
| 80 | 沟通 | 2019-03-19 → 2019-03-20 (+1d) |  |
| 81 | **收尾** | 2019-06-25 → 2019-06-26 (+1d) |  |
| 82 | 项目内部收尾 | 2019-06-25 → 2019-06-26 (+1d) | 0d → none |
| 83 | 项目展示 | 2019-06-18 → 2019-06-19 (+1d) |  |

## Version 4 (saved 2019-06-19, file 3.4教学辅助系统估算持续时间.mpp)

Last finish 2019-06-26 → 2019-06-25 (-1d).

Changed:

| ID | Task | Start | Finish | Complete | Total float |
| --- | --- | --- | --- | --- | --- |
| 1 | **启动** | 2019-03-18 A | 2019-04-03 → 2019-04-02 (-1d) | 0% → 4% | none → -8d |
| 2 | 任命项目经理 |  | 2019-03-19 → 2019-03-18 (-1d) |  |  |
| 3 | 组建核心团队 | 2019-03-19 A | 2019-03-20 → 2019-03-19 (-1d) | 0% → 50% |  |
| 4 | 关系人分析 |  | 2019-03-22 → 2019-03-21 (-1d) |  |  |
| 5 | 制订章程 |  | 2019-03-29 → 2019-03-28 (-1d) |  | none → -61d |
| 6 | 确定项目发起人 |  | 2019-03-19 → 2019-03-18 (-1d) |  |  |
| 7 | 制定里程碑进度计划 |  | 2019-04-02 → 2019-04-01 (-1d) |  | none → -61d |
| 8 | 项目启动大会 |  | 2019-04-03 → 2019-04-02 (-1d) |  | none → -61d |
| 10 | **规划范围** |  | 2019-04-17 → 2019-04-16 (-1d) |  | none → -61d |
| 11 | 制定需求说明书 |  | 2019-04-08 → 2019-04-05 (-3d) |  | none → -61d |
| 12 | 界面设计 |  | 2019-04-10 → 2019-04-09 (-1d) |  | none → -61d |
| 13 | 详细设计说明书 |  | 2019-04-15 → 2019-04-12 (-3d) |  | none → -61d |
| 14 | 范围说明书 |  | 2019-04-04 → 2019-04-03 (-1d) |  | none → -61d |
| 15 | 创建WBS |  | 2019-04-16 → 2019-04-15 (-1d) |  | none → -61d |
| 16 | 形成范围基准 |  | 2019-04-17 → 2019-04-16 (-1d) |  | none → -61d |
| 17 | **规划时间** |  | 2019-04-23 → 2019-04-22 (-1d) |  | none → -61d |
| 18 | 排列工作包顺序 |  | 2019-04-19 → 2019-04-18 (-1d) |  | none → -61d |
| 19 | 估算资源 |  | 2019-04-22 → 2019-04-19 (-3d) |  | none → -61d |
| 20 | 估算持续时间 |  | 2019-04-22 → 2019-04-19 (-3d) |  | none → -61d |
| 21 | 制定进度计划 |  | 2019-04-23 → 2019-04-22 (-1d) |  | none → -61d |
| 22 | **规划成本** |  | 2019-04-25 → 2019-04-24 (-1d) |  | none → -61d |
| 23 | 项目成本估算 |  | 2019-04-24 → 2019-04-23 (-1d) |  | none → -61d |
| 24 | 项目预算 |  | 2019-04-25 → 2019-04-24 (-1d) |  | none → -60d |
| 25 | **规划质量** |  | 2019-04-26 → 2019-04-25 (-1d) |  | none → -61d |
| 26 | 制定测试计划 |  | 2019-04-25 → 2019-04-24 (-1d) |  | none → -61d |
| 27 | 制定测试用例 |  | 2019-04-26 → 2019-04-25 (-1d) |  | none → -61d |
| 28 | **规划人力资源** |  | 2019-04-19 → 2019-04-18 (-1d) |  | none → -56d |
| 29 | 制定人力资源计划 |  | 2019-04-18 → 2019-04-17 (-1d) |  | none → -56d |
| 30 | 制定人员配备管理计划 |  | 2019-04-19 → 2019-04-18 (-1d) |  | none → -56d |
| 31 | **规划沟通** |  | 2019-04-18 → 2019-04-17 (-1d) |  | none → -55d |
| 32 | 制定沟通管理计划 |  | 2019-04-18 → 2019-04-17 (-1d) |  | none → -55d |
| 33 | **规划风险** |  | 2019-04-19 → 2019-04-18 (-1d) |  | none → -34d |
| 34 | 识别风险 |  | 2019-03-19 → 2019-03-18 (-1d) |  |  |
| 35 | 风险分析 |  | 2019-03-20 → 2019-03-19 (-1d) |  |  |
| 36 | 制定风险登记册 |  | 2019-04-19 → 2019-04-18 (-1d) |  | none → -56d |
| 38 | **执行与监控** |  | 2019-05-06 → 2019-05-03 (-3d) |  | none → -61d |
| 39 | 组建项目团队 |  | 2019-05-06 → 2019-05-03 (-3d) |  | none → -61d |
| 40 | **项目执行** |  | 2019-04-23 → 2019-04-20 (-3d) |  |  |
| 41 | **学生CS模块** |  | 2019-03-28 → 2019-03-27 (-1d) |  | none → 0d |
| 42 | 登录修改密码 |  | 2019-03-19 → 2019-03-18 (-1d) |  |  |
| 43 | 资源共享 |  | 2019-03-22 → 2019-03-21 (-1d) |  |  |
| 44 | 签到 |  | 2019-03-27 → 2019-03-26 (-1d) |  |  |
| 45 | 录屏 |  | 2019-03-07 → 2019-03-06 (-1d) |  |  |
| 46 | 签到排名 |  | 2019-03-28 → 2019-03-27 (-1d) |  |  |
| 47 | 课堂小测 |  | 2019-03-05 → 2019-03-04 (-1d) |  |  |
| 48 | 成绩分析和预测 |  | 2019-03-11 → 2019-03-08 (-3d) |  |  |
| 49 | 共享屏幕 |  | 2019-03-05 → 2019-03-04 (-1d) |  |  |
| 50 | **老师CS模块** |  | 2019-03-29 → 2019-03-28 (-1d) |  | none → 0d |
| 51 | 登录修改密码 |  | 2019-03-19 → 2019-03-18 (-1d) |  |  |
| 52 | 资源共享 |  | 2019-03-22 → 2019-03-21 (-1d) |  |  |
| 53 | 查看签到记录 |  | 2019-03-29 → 2019-03-28 (-1d) |  |  |
| 54 | 共享屏幕 |  | 2019-03-07 → 2019-03-06 (-1d) |  |  |
| 55 | 随机点名 |  | 2019-03-08 → 2019-03-07 (-1d) |  |  |
| 56 | 学生演示 |  | 2019-02-15 → 2019-02-14 (-1d) |  |  |
| 57 | 查看小测 |  | 2019-03-25 → 2019-03-22 (-3d) |  |  |
| 58 | 课堂反馈 |  | 2019-03-26 → 2019-03-25 (-1d) |  |  |
| 59 | 上传小测 |  | 2019-03-20 → 2019-03-19 (-1d) |  |  |
| 60 | **学生BS模块** |  | 2019-04-19 → 2019-04-18 (-1d) |  | none → 0d |
| 61 | 登录修改密码 |  | 2019-04-05 → 2019-04-04 (-1d) |  |  |
| 63 | 查看请假记录 |  | 2019-04-19 → 2019-04-18 (-1d) |  |  |
| 64 | **老师BS模块** |  | 2019-04-19 → 2019-04-18 (-1d) |  | none → 0d |
| 65 | 登录修改密码 |  | 2019-04-05 → 2019-04-04 (-1d) |  |  |
| 66 | 审核请假条 |  | 2019-04-19 → 2019-04-18 (-1d) |  |  |
| 67 | 请假记录查看 |  | 2019-04-19 → 2019-04-18 (-1d) |  |  |
| 68 | 创建班级 |  | 2019-04-15 → 2019-04-12 (-3d) |  |  |
| 70 | 各项指标监控 |  | 2019-05-06 → 2019-05-03 (-3d) |  |  |
| 71 | 监控评审 |  | 2019-05-06 → 2019-05-03 (-3d) |  |  |
| 72 | 变更评审 |  | 2019-03-19 → 2019-03-18 (-1d) |  |  |
| 73 | 例会 |  | 2019-03-22 → 2019-03-21 (-1d) |  |  |
| 78 | **团队建设** |  | 2019-03-20 → 2019-03-19 (-1d) |  | none → 0d |

| ID | Task | Finish | Total float |
| --- | --- | --- | --- |
| 79 | 娱乐活动 | 2019-03-20 → 2019-03-19 (-1d) |  |
| 80 | 沟通 | 2019-03-20 → 2019-03-19 (-1d) |  |
| 81 | **收尾** | 2019-06-26 → 2019-06-25 (-1d) |  |
| 82 | 项目内部收尾 | 2019-06-26 → 2019-06-25 (-1d) | none → 0d |
| 83 | 项目展示 | 2019-06-19 → 2019-06-18 (-1d) |  |

## Version 5 (saved 2019-06-19, file 3.5教学辅助系统进度计划（部分资源）.mpp)

Last finish stays 2019-06-25. Complete tasks 0 → 39.

Changed:

| ID | Task | Start | Finish | Duration | Complete | Total float | Other |
| --- | --- | --- | --- | --- | --- | --- | --- |
| 1 | **启动** |  |  | 12d? → 12d | 4% → 87% | -8d → 59d |  |
| 2 | 任命项目经理 | 2019-03-18 A | 2019-03-18 A |  | 0% → 100% |  |  |
| 3 | 组建核心团队 |  | 2019-03-19 A |  | 50% → 100% |  |  |
| 4 | 关系人分析 | 2019-03-20 A |  |  | 0% → 75% |  |  |
| 5 | 制订章程 | 2019-03-22 A | 2019-03-28 A |  | 0% → 100% | -61d → none |  |
| 6 | 确定项目发起人 | 2019-03-18 A | 2019-03-18 A | 1d? → 1d | 0% → 100% |  |  |
| 7 | 制定里程碑进度计划 | 2019-03-29 A |  |  | 0% → 40% | -61d → 60d |  |
| 8 | 项目启动大会 | 2019-04-02 A | 2019-04-02 A |  | 0% → 100% | -61d → none |  |
| 9 | **规划** | 2019-03-18 A |  |  | 0% → 51% | -49d → 0d |  |
| 10 | **规划范围** | 2019-04-03 A |  |  | 0% → 78% | -61d → 0.25d |  |
| 11 | 制定需求说明书 | 2019-04-04 A | 2019-04-05 A |  | 0% → 100% | -61d → none |  |
| 12 | 界面设计 | 2019-04-08 A | 2019-04-09 A |  | 0% → 100% | -61d → none |  |
| 13 | 详细设计说明书 | 2019-04-10 A |  |  | 0% → 50% | -61d → 0.7d |  |
| 14 | 范围说明书 | 2019-04-03 A | 2019-04-03 A |  | 0% → 100% | -61d → none |  |
| 15 | 创建WBS | 2019-04-15 A |  |  | 0% → 70% | -61d → 0.55d |  |
| 16 | 形成范围基准 | 2019-04-16 A |  |  | 0% → 55% | -61d → 0.25d |  |
| 17 | **规划时间** | 2019-04-17 A |  |  | 0% → 77% | -61d → 0.4d |  |
| 18 | 排列工作包顺序 | 2019-04-17 A | 2019-04-18 A |  | 0% → 100% | -61d → none |  |
| 19 | 估算资源 | 2019-04-19 A |  |  | 0% → 75% | -61d → 0.35d |  |
| 20 | 估算持续时间 | 2019-04-19 A |  |  | 0% → 75% | -61d → 0.35d |  |
| 21 | 制定进度计划 | 2019-04-22 A |  |  | 0% → 35% | -61d → 0.4d |  |
| 22 | **规划成本** | 2019-04-23 A |  |  | 0% → 20% | -61d → 1d |  |
| 23 | 项目成本估算 | 2019-04-23 A |  |  | 0% → 40% | -61d → 1d |  |
| 25 | **规划质量** | 2019-04-24 A |  |  | 0% → 95% | -61d → 0d |  |
| 26 | 制定测试计划 | 2019-04-24 A | 2019-04-24 A |  | 0% → 100% | -61d → none |  |
| 27 | 制定测试用例 | 2019-04-25 A |  |  | 0% → 90% | -61d → 0d |  |
| 28 | **规划人力资源** | 2019-04-17 A |  |  | 0% → 60% | -56d → 5d |  |
| 29 | 制定人力资源计划 | 2019-04-17 A | 2019-04-17 A |  | 0% → 100% | -56d → none |  |
| 30 | 制定人员配备管理计划 | 2019-04-18 A |  |  | 0% → 20% | -56d → 5d |  |
| 31 | **规划沟通** | 2019-04-17 A |  |  | 0% → 25% | -55d → 6d |  |
| 32 | 制定沟通管理计划 | 2019-04-17 A |  |  | 0% → 25% | -55d → 6d |  |
| 38 | **执行与监控** | 2019-05-03 A |  |  | 0% → 40% | -61d → 0d |  |
| 39 | 组建项目团队 | 2019-05-03 A |  |  | 0% → 40% | -61d → -34d |  |
| 40 | **项目执行** |  | 2019-04-20 A |  | 0% → 100% |  |  |
| 41 | **学生CS模块** | 2019-02-07 A | 2019-03-27 A |  | 0% → 100% | 0d → none |  |
| 42 | 登录修改密码 | 2019-03-18 A | 2019-03-18 A |  | 0% → 100% |  | resources 程序员1 → 开发团队 |
| 43 | 资源共享 | 2019-03-20 A | 2019-03-21 A |  | 0% → 100% |  | resources 程序员1 → 开发团队 |
| 44 | 签到 | 2019-03-18 A | 2019-03-26 A |  | 0% → 100% |  | resources 程序员3; 程序员7 → 开发团队 |
| 45 | 录屏 | 2019-02-16 A | 2019-03-06 A |  | 0% → 100% |  | resources 程序员4; 程序员2 → none |
| 46 | 签到排名 | 2019-03-27 A | 2019-03-27 A |  | 0% → 100% |  | resources 程序员1 → none |
| 47 | 课堂小测 | 2019-02-28 A | 2019-03-04 A |  | 0% → 100% |  | resources 程序员1; 程序员5; 程序员6 → none |
| 48 | 成绩分析和预测 | 2019-03-05 A | 2019-03-08 A |  | 0% → 100% |  | resources 程序员1 → none |
| 49 | 共享屏幕 | 2019-02-07 A | 2019-03-04 A |  | 0% → 100% |  | resources 程序员2; 程序员8 → 开发团队 |
| 50 | **老师CS模块** | 2019-02-07 A | 2019-03-28 A |  | 0% → 100% | 0d → none |  |
| 51 | 登录修改密码 | 2019-03-18 A | 2019-03-18 A |  | 0% → 100% |  | resources 程序员1 → 开发团队 |
| 52 | 资源共享 | 2019-03-20 A | 2019-03-21 A |  | 0% → 100% |  | resources 程序员1 → 开发团队 |
| 53 | 查看签到记录 | 2019-03-27 A | 2019-03-28 A |  | 0% → 100% |  | resources 程序员2; 程序员8 → 开发团队 |
| 54 | 共享屏幕 | 2019-02-07 A | 2019-03-06 A |  | 0% → 100% |  | resources 程序员2; 程序员8 → 开发团队 |
| 55 | 随机点名 | 2019-03-07 A | 2019-03-07 A |  | 0% → 100% |  | resources 程序员7; 程序员3 → 开发团队 |
| 56 | 学生演示 | 2019-02-07 A | 2019-02-14 A |  | 0% → 100% |  | resources 程序员2; 程序员7 → none |
| 57 | 查看小测 | 2019-03-20 A | 2019-03-22 A |  | 0% → 100% |  | resources 程序员1 → none |
| 58 | 课堂反馈 | 2019-03-22 A | 2019-03-25 A |  | 0% → 100% |  | resources 程序员3; 程序员7 → none |
| 59 | 上传小测 | 2019-03-16 A | 2019-03-19 A |  | 0% → 100% |  | resources 程序员1 → 开发团队 |
| 60 | **学生BS模块** | 2019-04-04 A | 2019-04-18 A |  | 0% → 100% | 0d → none |  |
| 61 | 登录修改密码 | 2019-04-04 A | 2019-04-04 A |  | 0% → 100% |  | resources 程序员2 → 开发团队 |
| 62 | 上传请假条 | 2019-04-15 A | 2019-04-17 A |  | 0% → 100% |  | resources 程序员2 → 开发团队 |
| 63 | 查看请假记录 | 2019-04-18 A | 2019-04-18 A |  | 0% → 100% |  | resources 程序员2 → 开发团队 |
| 64 | **老师BS模块** | 2019-04-04 A | 2019-04-18 A |  | 0% → 100% | 0d → none |  |
| 65 | 登录修改密码 | 2019-04-04 A | 2019-04-04 A |  | 0% → 100% |  | resources 程序员7 → 开发团队 |
| 66 | 审核请假条 | 2019-04-18 A | 2019-04-18 A |  | 0% → 100% |  | resources 程序员7 → 开发团队 |
| 67 | 请假记录查看 | 2019-04-18 A | 2019-04-18 A |  | 0% → 100% |  | resources 程序员7 → 开发团队 |
| 68 | 创建班级 | 2019-04-11 A | 2019-04-12 A |  | 0% → 100% |  | resources 程序员7 → 开发团队 |
| 69 | **项目监控** | 2019-03-18 A |  |  | 0% → 75% |  |  |
| 70 | 各项指标监控 | 2019-05-03 A |  |  | 0% → 13% |  |  |
| 71 | 监控评审 | 2019-05-03 A |  |  | 0% → 13% |  |  |
| 72 | 变更评审 | 2019-03-18 A | 2019-03-18 A |  | 0% → 100% |  |  |
| 73 | 例会 | 2019-03-18 A | 2019-03-21 A |  | 0% → 100% |  |  |
| 74 | **管理关系人** | 2019-05-03 A |  |  | 0% → 50% |  |  |
| 75 | 发布项目信息 | 2019-05-03 A |  |  | 0% → 50% |  |  |
| 76 | 报告监控指标 | 2019-05-03 A |  |  | 0% → 50% |  |  |

| ID | Task | Start | Finish | Complete | Total float |
| --- | --- | --- | --- | --- | --- |
| 77 | 关系人沟通 | 2019-05-03 A |  | 0% → 50% |  |
| 78 | **团队建设** | 2019-03-18 A |  | 0% → 15% |  |
| 79 | 娱乐活动 | 2019-03-18 A |  | 0% → 15% |  |
| 80 | 沟通 | 2019-03-18 A |  | 0% → 15% |  |
| 81 | **收尾** | 2019-06-17 A | 2019-06-25 A | 0% → 100% |  |
| 82 | 项目内部收尾 | 2019-06-17 A | 2019-06-25 A | 0% → 100% | 0d → none |
| 83 | 项目展示 | 2019-06-18 A | 2019-06-18 A | 0% → 100% |  |
